# Gantt

Schedule from MS Project, 2016-01-25 to 2016-09-27, status date 2016-02-12, A marks actual dates.

## Calendars

- Night Shift: Mon 23:00-24:00; Tue-Fri 00:00-03:00, 04:00-08:00, 23:00-24:00; Sat 00:00-03:00, 04:00-08:00; Sun off.

## Resources

| Resource |
| --- |
| Julien |
| Jonathan |
| Jeremy |
| Simon |
| Antoine |
| Florian |

## Schedule

| ID | WBS | Task | Type | Duration | Start | Finish | Predecessors | Complete | Remaining | Total slack | Free slack | Constraint | Resources | Work | Actual work |
| --- | --- | --- | --- | --- | --- | --- | --- | --- | --- | --- | --- | --- | --- | --- | --- |
| 1 | 1 | **Logiciel** |  | 176d | 2016-01-25 A | 2016-09-27 |  | 5% | 168.01d | 0d |  |  |  | 5872.5h | 171h |
| 2 | 1.1 | **Gérer un projet** |  | 114d | 2016-01-25 A | 2016-07-01 |  | 5% | 108.3d | 62d |  |  |  | 980.5h | 40h |
| 3 | 1.1.1 | Interface utilisateur |  | 30d | 2016-03-18 | 2016-04-29 |  |  |  | 107d |  |  | Jonathan | 232h |  |
| 4 | 1.1.2 | Sauvegarder un projet |  | 10d | 2016-01-25 A | 2016-02-06 |  | 75% | 2.5d | 166d |  |  | Julien | 44h | 40h |
| 5 | 1.1.3 | Importer un projet MIDI |  | 20d | 2016-04-08 | 2016-05-06 |  |  |  | 102d |  |  | Antoine | 152h |  |
| 6 | 1.1.4 | Importer un projet MusicXML |  | 10d | 2016-05-05 | 2016-05-19 |  |  |  | 93d |  |  | Antoine | 80h |  |
| 7 | 1.1.5 | Exporter un projet en MusicXML |  | 20d | 2016-03-15 | 2016-04-12 |  |  |  | 120d |  | start no earlier than 2016-03-15 | Florian | 136h |  |
| 8 | 1.1.6 | Exporter un projet en MIDI |  | 20d | 2016-05-06 | 2016-06-03 |  |  |  | 82d |  |  | Florian [50%] | 76.5h |  |
| 9 | 1.1.7 | Exporter un projet en MP3 |  | 40d | 2016-05-06 | 2016-07-01 |  |  |  | 62d | 0d | start no earlier than 2016-05-06 | Simon; Julien | 260h |  |
| 10 | 1.1.8 | Gestion de projet - Fin du développement | milestone | 0d | 2016-07-01 | 2016-07-01 | 9 |  |  | 62d |  |  |  |  |  |
| 11 | 1.2 | **Lire une partition** |  | 30d | 2016-01-25 A | 2016-03-05 |  | 29% | 21.25d | 146d |  |  |  | 224h | 79h |
| 12 | 1.2.1 | Démarrer la lecture |  | 25d | 2016-01-25 A | 2016-02-27 |  | 25% | 18.75d | 3d | 0d |  | Florian | 192h | 55h |
| 13 | 1.2.2 | Arrêt de la lecture |  | 5d | 2016-02-29 A | 2016-03-05 | 12 | 50% | 2.5d | 146d | 0d |  | Florian | 32h | 24h |
| 14 | 1.2.3 | Lecture de partition - Fin du développement | milestone | 0d | 2016-03-05 | 2016-03-05 | 13 |  |  | 146d |  |  |  |  |  |
| 15 | 1.3 | **Autres fonctionnalités** |  | 8d | 2016-03-04 | 2016-03-16 |  |  |  | 139d |  |  |  | 48h |  |
| 16 | 1.3.1 | Définir le tempo du métronome |  | 4d | 2016-03-04 | 2016-03-10 |  |  |  | 139d | 0d |  | Florian | 24h |  |
| 17 | 1.3.2 | Lancer le métronome |  | 4d | 2016-03-10 | 2016-03-16 | 16 |  |  | 139d | 0d |  | Florian | 24h |  |
| 18 | 1.3.3 | Autres Fonctionnalités - Fin du développement | milestone | 0d | 2016-03-16 | 2016-03-16 | 17 |  |  | 139d |  |  |  |  |  |
| 19 | 1.4 | **Éditer de partition** |  | 166d | 2016-02-08 A | 2016-09-27 |  | 2% | 162.16d | 0d |  |  |  | 4620h | 52h |
| 20 | 1.4.1 | Modifier le tempo |  | 2d | 2016-02-08 A | 2016-02-10 A |  | 100% |  |  |  | start no earlier than 2016-02-08 | Julien | 4h | 4h |
| 21 | 1.4.2 | Placer un élément musical |  | 40d | 2016-02-09 A | 2016-04-05 |  | 10% | 36d | 125d |  | finish no earlier than 2016-04-05 | Julien | 224h | 28h |
| 22 | 1.4.3 | Supprimer un élément musical |  | 15d | 2016-03-18 | 2016-04-08 |  |  |  | 122d | 0d | start no earlier than 2016-03-18 | Jeremy | 119h |  |
| 23 | 1.4.4 | Édition de partition - Placement et suppression d'élément musicaux | milestone | 0d | 2016-04-08 | 2016-04-08 | 22 |  |  | 122d |  |  |  |  |  |
| 24 | 1.4.5 | Placer le curseur d'édition |  | 10d | 2016-04-06 | 2016-04-20 |  |  |  | 114d |  | start no earlier than 2016-04-06 | Julien | 48h |  |
| 25 | 1.4.6 | Modifier le type de mesure |  | 10d | 2016-04-21 A | 2016-05-05 |  | 20% | 8d | 103d |  |  | Julien | 48h | 20h |

| ID | WBS | Task | Type | Duration | Start | Finish | Predecessors | Total slack | Free slack | Constraint | Resources | Work |
| --- | --- | --- | --- | --- | --- | --- | --- | --- | --- | --- | --- | --- |
| 26 | 1.4.7 | **Générer une partition par port MIDI** |  | 35d | 2016-03-21 | 2016-05-07 |  | 101d |  |  |  | 294h |
| 27 | 1.4.7.1 | Lancer le métronome |  | 1d | 2016-04-28 | 2016-04-29 |  | 106d |  | start no earlier than 2016-03-19 | Jonathan | 16h |
| 28 | 1.4.7.2 | Enregistrer le morceau |  | 10d | 2016-03-21 | 2016-04-02 |  | 101d | 0d |  | Simon | 79h |
| 29 | 1.4.7.3 | Générer une partition par port MIDI - Développement mis parcour | milestone | 0d | 2016-04-18 | 2016-04-18 |  | 116d |  | start no earlier than 2016-04-18 |  |  |
| 30 | 1.4.7.4 | Récupérer les notes |  | 15d | 2016-04-04 | 2016-04-23 | 28 | 101d | 0d |  | Simon | 120h |
| 31 | 1.4.7.5 | Ajouter les notes à la partition |  | 10d | 2016-04-25 | 2016-05-07 | 30 | 101d | 0d |  | Simon | 79h |
| 32 | 1.4.7.6 | Générer une partition par port MIDI - Fin du développement | milestone | 0d | 2016-05-07 | 2016-05-07 | 31 | 101d |  |  |  |  |
| 33 | 1.4.8 | **Générer une partition par port JACK** |  | 136d | 2016-03-21 | 2016-09-27 |  | 0d |  |  |  | 3883h |
| 34 | 1.4.8.1 | Lancer le métronome |  | 2d | 2016-05-03 | 2016-05-05 |  | 103d |  | start no earlier than 2016-04-29 | Julien | 4h |
| 35 | 1.4.8.2 | Enregistrer le morceau |  | 14d | 2016-03-21 | 2016-04-08 |  | 62d | 0d | start no earlier than 2016-03-19 | Antoine | 119h |
| 36 | 1.4.8.3 | Décomposer le son en fréquence |  | 15d | 2016-04-08 | 2016-04-29 | 35 | 62d | 0d |  | Florian; Jeremy | 238h |
| 37 | 1.4.8.4 | Générer une partition par port JACK - Développement mis parcour | milestone | 0d | 2016-04-18 | 2016-04-18 |  | 116d |  | start no earlier than 2016-04-18 |  |  |
| 38 | 1.4.8.5 | Filtrer les pics de fréquence |  | 15d | 2016-04-29 | 2016-05-20 | 36 | 62d | 1d |  | Jeremy; Florian | 232h |
| 39 | 1.4.8.6 | Générer une partition par port JACK - Fin du développement | milestone | 0d | 2016-05-20 | 2016-05-20 |  | 92d |  | start no earlier than 2016-05-20 |  |  |
| 40 | 1.4.8.7 | **Reconnaitre les notes de la guitare** |  | 88d | 2016-05-23 | 2016-09-22 |  | 3d |  |  |  | 1588h |
| 41 | 1.4.8.7.1 | Déterminer les harmoniques |  | 29d | 2016-05-23 | 2016-07-01 | 38 | 62d |  | start no earlier than 2016-05-23 | Antoine; Jeremy | 464h |
| 42 | 1.4.8.7.2 | Supprimer les harmoniques du spectre fréquentiel |  | 20d | 2016-07-04 | 2016-07-30 |  | 3d | 0d | start no earlier than 2016-07-04 | Antoine; Jeremy; Julien | 404h |
| 43 | 1.4.8.7.3 | Reconnaitre les notes de la guitare | milestone | 0d | 2016-07-30 | 2016-07-30 |  | 41d |  | start no earlier than 2016-07-30 |  |  |
| 44 | 1.4.8.7.4 | Identifier la note grâce à la fondamentale |  | 20d | 2016-08-01 | 2016-08-27 | 42 | 3d | 0d | start no earlier than 2016-08-01 | Antoine; Jeremy; Julien | 404h |
| 45 | 1.4.8.7.5 | Définir la durée de la note |  | 18d | 2016-08-27 | 2016-09-22 | 44 | 3d |  | start no earlier than 2016-08-15 | Antoine; Jeremy; Julien [50%] | 316h |
| 46 | 1.4.8.8 | **Reconnaitre les notes du piano** |  | 90d | 2016-05-23 | 2016-09-24 |  | 1d |  |  |  | 1640h |
| 47 | 1.4.8.8.1 | Déterminer les harmoniques |  | 30d | 2016-05-23 | 2016-07-02 | 38 | 61d |  | start no earlier than 2016-05-21 | Florian [50%]; Jonathan | 348h |
| 48 | 1.4.8.8.2 | Supprimer les harmoniques du spectre fréquentiel |  | 20d | 2016-07-04 | 2016-07-30 |  | 1d | 0d | start no earlier than 2016-07-04 | Florian; Jonathan; Simon | 456h |
| 49 | 1.4.8.8.3 | Reconnaitre les notes du piano | milestone | 0d | 2016-07-30 | 2016-07-30 |  | 41d |  | start no earlier than 2016-07-30 |  |  |
| 50 | 1.4.8.8.4 | Identifier la note grâce à la fondamentale |  | 20d | 2016-08-01 | 2016-08-27 | 48 | 1d | 0d | start no earlier than 2016-08-01 | Florian; Jonathan; Simon | 456h |
| 51 | 1.4.8.8.5 | Définir la durée de la note |  | 20d | 2016-08-29 | 2016-09-24 | 50 | 1d |  | start no earlier than 2016-08-15 | Florian; Jonathan; Simon [50%] | 380h |
| 52 | 1.4.8.9 | Ajouter les notes à la partition |  | 10d | 2016-09-13 | 2016-09-27 |  | 0d |  | start no earlier than 2016-09-13 | Simon [50%]; Julien [50%] | 62h |
| 53 | 1.4.8.10 | Logiciel - Fin du développement | milestone | 0d | 2016-09-27 | 2016-09-27 | 52 | 0d |  |  |  |  |

| ID | WBS | Task | Duration | Start | Finish | Predecessors | Complete | Remaining | Total slack | Free slack | Constraint | Resources | Work | Actual work |
| --- | --- | --- | --- | --- | --- | --- | --- | --- | --- | --- | --- | --- | --- | --- |
| 54 | 2 | **Site internet** | 39d | 2016-01-25 A | 2016-03-18 |  | 21% | 30.99d | 137d |  |  |  | 544h | 126h |
| 55 | 2.1 | **Site Vitrine** | 15d | 2016-01-25 A | 2016-02-13 |  | 56% | 6.56d | 161d |  |  |  | 128h | 94h |
| 56 | 2.1.1 | Consulter les informations du projet | 5d | 2016-01-25 A | 2016-01-30 |  | 75% | 1.25d | 171d |  |  | Jonathan | 32h | 31h |
| 57 | 2.1.2 | Contacter l'équipe | 5d | 2016-01-25 A | 2016-01-30 A | 56FF | 100% |  |  |  |  | Jonathan | 32h | 32h |
| 58 | 2.1.3 | Mise en place de la plateforme de téléchargement | 5d | 2016-02-01 A | 2016-02-06 |  | 25% | 3.75d | 2d | 0d | start no earlier than 2016-02-01 | Jonathan | 32h | 15h |
| 59 | 2.1.4 | Mise en place de la plateforme d'achat | 5d | 2016-02-08 A | 2016-02-13 | 58 | 25% | 3.75d | 161d |  |  | Jonathan | 32h | 16h |
| 60 | 2.2 | **Site Communautaire** | 39d | 2016-01-25 A | 2016-03-18 |  | 9% | 35.34d | 137d |  |  |  | 416h | 32h |
| 61 | 2.2.1 | Créer un compte | 3d | 2016-01-25 A | 2016-01-28 A |  | 100% |  |  |  |  | Jonathan | 16h | 16h |
| 62 | 2.2.2 | Se connecter / Se déconnecter | 3d | 2016-01-25 A | 2016-01-28 A | 61FF | 100% |  |  |  |  | Jonathan | 16h | 16h |
| 63 | 2.2.3 | Consulter un compte utilisateur | 5d | 2016-02-05 | 2016-02-12 |  |  |  | 162d | 0d | start no earlier than 2016-02-05 | Jonathan | 32h |  |
| 64 | 2.2.4 | Modifier les informations personnelles | 3d | 2016-02-09 | 2016-02-12 | 63FF |  |  | 162d |  |  | Jonathan | 16h |  |
| 65 | 2.2.5 | Partager une partition | 5d | 2016-02-12 | 2016-02-19 |  |  |  | 137d | 0d | start no earlier than 2016-02-12 | Jonathan | 32h |  |
| 66 | 2.2.6 | Arrêter le partage d'une partition | 3d | 2016-02-16 | 2016-02-19 | 65FF |  |  | 157d |  |  | Jonathan | 16h |  |
| 67 | 2.2.7 | S'abonner à un utilisateur | 3d | 2016-02-22 | 2016-02-25 |  |  |  | 153d | 0d | start no earlier than 2016-02-20 | Jonathan | 16h |  |
| 68 | 2.2.8 | Se désabonner d'un utilisateur | 3d | 2016-02-22 | 2016-02-25 | 67FF |  |  | 153d |  |  | Jonathan | 16h |  |
| 69 | 2.2.9 | Consulter une partition | 20d | 2016-02-19 | 2016-03-18 | 65 |  |  | 137d | 0d |  | Jonathan | 160h |  |
| 70 | 2.2.10 | Mettre une partition en favoris | 3d | 2016-03-15 | 2016-03-18 | 69FF |  |  | 137d | 0d |  | Jonathan | 16h |  |
| 71 | 2.2.11 | Enlever une partition de ses favoris | 3d | 2016-03-15 | 2016-03-18 | 70FF |  |  | 137d |  |  | Jonathan | 16h |  |
| 72 | 2.2.12 | Rechercher un utilisateur | 5d | 2016-03-03 | 2016-03-10 |  |  |  | 143d |  | start no earlier than 2016-03-03 | Jonathan | 32h |  |
| 73 | 2.2.13 | Rechercher une partition | 5d | 2016-03-11 | 2016-03-18 |  |  |  | 137d |  | start no earlier than 2016-03-11 | Jonathan | 32h |  |
| 74 | 3 | **Application Windows Phone** | 39d | 2016-01-25 A | 2016-03-18 |  | 86% | 5.47d | 137d |  |  |  | 352h | 304h |
| 75 | 3.1 | **Gérer son compte utilisateur** | 24d | 2016-01-25 A | 2016-02-26 |  | 81% | 4.57d | 152d |  |  |  | 136h | 112h |
| 76 | 3.1.1 | Modifier ses informations | 4d | 2016-01-25 A | 2016-01-29 A |  | 100% |  |  |  |  | Simon | 24h | 24h |
| 77 | 3.1.2 | Modifier son mot de passe | 3d | 2016-02-01 A | 2016-02-04 A |  | 100% |  |  |  | start no earlier than 2016-01-30 | Simon | 16h | 16h |
| 78 | 3.1.3 | Modifier sa photo | 10d | 2016-02-05 A | 2016-02-19 A |  | 100% |  |  |  | start no earlier than 2016-02-05 | Simon | 72h | 72h |
| 79 | 3.1.4 | Arrêter le partage d'une partition | 4d | 2016-02-22 | 2016-02-26 |  |  |  | 152d |  | start no earlier than 2016-02-20 | Simon | 24h |  |

| ID | WBS | Task | Duration | Start | Finish | Predecessors | Complete | Remaining | Total slack | Constraint | Resources | Work | Actual work |
| --- | --- | --- | --- | --- | --- | --- | --- | --- | --- | --- | --- | --- | --- |
| 80 | 3.2 | **Accès à la communauté** | 10d | 2016-02-29 A | 2016-03-12 A |  | 100% |  |  |  |  | 192h | 192h |
| 81 | 3.2.1 | Rechercher une partition | 5d | 2016-02-29 A | 2016-03-05 A |  | 100% |  |  | start no earlier than 2016-02-27 | Simon | 32h | 32h |
| 82 | 3.2.2 | Consulter une partition | 5d | 2016-03-07 A | 2016-03-12 A | 81 | 100% |  |  | start no earlier than 2016-01-25 | Simon | 32h | 32h |
| 83 | 3.2.3 | Mettre une partition en favoris | 3d | 2016-03-09 A | 2016-03-12 A | 82FF | 100% |  |  |  | Simon | 16h | 16h |
| 84 | 3.2.4 | Enlever une partition de ses favoris | 3d | 2016-03-09 A | 2016-03-12 A | 82FF | 100% |  |  |  | Simon | 16h | 16h |
| 85 | 3.2.5 | Rechercher un utilisateur | 5d | 2016-02-29 A | 2016-03-05 A |  | 100% |  |  | start no earlier than 2016-02-29 | Simon | 32h | 32h |
| 86 | 3.2.6 | Consulter le profil d'un utilisateur | 5d | 2016-03-07 A | 2016-03-12 A | 85 | 100% |  |  |  | Simon | 32h | 32h |
| 87 | 3.2.7 | S'abonner à un utilisateur | 3d | 2016-03-09 A | 2016-03-12 A | 86FF | 100% |  |  |  | Simon | 16h | 16h |
| 88 | 3.2.8 | Se désabonner d'un utilisateur | 3d | 2016-03-09 A | 2016-03-12 A | 86FF | 100% |  |  |  | Simon | 16h | 16h |
| 89 | 3.3 | Se reconnecter | 4d | 2016-03-14 | 2016-03-18 |  |  |  | 137d | start no earlier than 2016-03-12 | Simon | 24h |  |
| 90 | 4 | **Application Android** | 39d | 2016-01-25 A | 2016-03-18 |  | 96% | 1.37d | 137d |  |  | 404h | 388h |
| 91 | 4.1 | **Gérer son compte utilisateur** | 24d | 2016-01-25 A | 2016-02-26 A |  | 100% |  |  |  |  | 159h | 159h |
| 92 | 4.1.1 | Modifier ses informations | 4d | 2016-01-25 A | 2016-01-29 A |  | 100% |  |  |  | Jeremy | 24h | 24h |
| 93 | 4.1.2 | Modifier son mot de passe | 3d | 2016-02-01 A | 2016-02-04 A |  | 100% |  |  | start no earlier than 2016-01-30 | Jeremy | 24h | 24h |
| 94 | 4.1.3 | Modifier sa photo | 10d | 2016-02-05 A | 2016-02-19 A |  | 100% |  |  | start no earlier than 2016-02-05 | Jeremy | 79h | 79h |
| 95 | 4.1.4 | Arrêter le partage d'une partition | 4d | 2016-02-22 A | 2016-02-26 A |  | 100% |  |  | start no earlier than 2016-02-20 | Jeremy | 32h | 32h |
| 96 | 4.2 | **Accès à la communauté** | 10d | 2016-02-29 A | 2016-03-12 |  | 94% | 0.62d | 141d |  |  | 214h | 198h |
| 97 | 4.2.1 | Rechercher une partition | 5d | 2016-02-29 A | 2016-03-05 A |  | 100% |  |  | finish no earlier than 2016-03-05 | Jeremy | 32h | 32h |
| 98 | 4.2.2 | Consulter une partition | 5d | 2016-03-07 A | 2016-03-12 | 97 | 80% | 1d | 141d | start no earlier than 2016-03-07 | Jeremy | 39h | 31h |
| 99 | 4.2.3 | Mettre une partition en favoris | 3d | 2016-03-09 A | 2016-03-12 A | 98FF | 100% |  |  |  | Jeremy | 16h | 16h |
| 100 | 4.2.4 | Enlever une partition de ses favoris | 3d | 2016-03-09 A | 2016-03-12 A | 98FF | 100% |  |  |  | Jeremy | 16h | 16h |
| 101 | 4.2.5 | Rechercher un utilisateur | 5d | 2016-02-29 A | 2016-03-05 A |  | 100% |  |  | start no earlier than 2016-02-29 | Jeremy | 39h | 39h |
| 102 | 4.2.6 | Consulter le profil d'un utilisateur | 5d | 2016-03-07 A | 2016-03-12 | 101 | 80% | 1d | 141d |  | Jeremy | 40h | 32h |
| 103 | 4.2.7 | S'abonner à un utilisateur | 3d | 2016-03-09 A | 2016-03-12 A | 102FF | 100% |  |  |  | Jeremy | 16h | 16h |
| 104 | 4.2.8 | Se désabonner d'un utilisateur | 3d | 2016-03-09 A | 2016-03-12 A | 102FF | 100% |  |  |  | Jeremy | 16h | 16h |
| 105 | 4.3 | Se reconnecter | 4d | 2016-03-14 A | 2016-03-18 A |  | 100% |  |  | start no earlier than 2016-03-14 | Jeremy | 31h | 31h |

| ID | WBS | Task | Duration | Start | Finish | Predecessors | Complete | Remaining | Total slack | Constraint | Resources | Work | Actual work |
| --- | --- | --- | --- | --- | --- | --- | --- | --- | --- | --- | --- | --- | --- |
| 106 | 5 | **Application iPhone** | 39d | 2016-01-25 A | 2016-03-18 |  | 93% | 2.74d | 137d |  |  | 352h | 328h |
| 107 | 5.1 | **Gérer son compte utilisateur** | 24d | 2016-01-25 A | 2016-02-26 |  | 81% | 4.57d | 152d |  |  | 136h | 112h |
| 108 | 5.1.1 | Modifier ses informations | 4d | 2016-01-25 A | 2016-01-29 A |  | 100% |  |  |  | Antoine | 24h | 24h |
| 109 | 5.1.2 | Modifier son mot de passe | 3d | 2016-02-01 A | 2016-02-04 A |  | 100% |  |  | start no earlier than 2016-01-30 | Antoine | 16h | 16h |
| 110 | 5.1.3 | Modifier sa photo | 10d | 2016-02-05 A | 2016-02-19 A |  | 100% |  |  | start no earlier than 2016-02-05 | Antoine | 72h | 72h |
| 111 | 5.1.4 | Arrêter le partage d'une partition | 4d | 2016-02-22 | 2016-02-26 |  |  |  | 152d | start no earlier than 2016-02-20 | Antoine | 24h |  |
| 112 | 5.2 | **Accès à la communauté** | 10d | 2016-02-29 A | 2016-03-12 A |  | 100% |  |  |  |  | 192h | 192h |
| 113 | 5.2.1 | Rechercher une partition | 5d | 2016-02-29 A | 2016-03-05 A |  | 100% |  |  | finish no earlier than 2016-03-05 | Antoine | 32h | 32h |
| 114 | 5.2.2 | Consulter une partition | 5d | 2016-03-07 A | 2016-03-12 A | 113 | 100% |  |  | start no earlier than 2016-03-07 | Antoine | 32h | 32h |
| 115 | 5.2.3 | Mettre une partition en favoris | 3d | 2016-03-09 A | 2016-03-12 A | 114FF | 100% |  |  |  | Antoine | 16h | 16h |
| 116 | 5.2.4 | Enlever une partition de ses favoris | 3d | 2016-03-09 A | 2016-03-12 A | 114FF | 100% |  |  |  | Antoine | 16h | 16h |
| 117 | 5.2.5 | Rechercher un utilisateur | 5d | 2016-02-29 A | 2016-03-05 A |  | 100% |  |  | start no earlier than 2016-02-29 | Antoine | 32h | 32h |
| 118 | 5.2.6 | Consulter le profil d'un utilisateur | 5d | 2016-03-07 A | 2016-03-12 A | 117 | 100% |  |  |  | Antoine | 32h | 32h |
| 119 | 5.2.7 | S'abonner à un utilisateur | 3d | 2016-03-09 A | 2016-03-12 A | 118FF | 100% |  |  |  | Antoine | 16h | 16h |
| 120 | 5.2.8 | Se désabonner d'un utilisateur | 3d | 2016-03-09 A | 2016-03-12 A | 118FF | 100% |  |  |  | Antoine | 16h | 16h |
| 121 | 5.3 | Se reconnecter | 4d | 2016-03-14 A | 2016-03-18 A |  | 100% |  |  | start no earlier than 2016-03-14 | Antoine | 24h | 24h |
